Schedule from MS Project, 2019-05-05 to 2019-07-08, A marks actual dates.
Microsoft

## Calendars

- 营销一体化日历: Mon-Fri 08:00-12:00, 13:00-17:00; Sat-Sun off.

## Resources

| Resource |
| --- |
| 18% |
| 100% |
| 0% |
| 费腾飞 |
| 杨晓亮 |
| 刘稳 |
| 翟羽楠 |
| 戴亚楠 |

## Schedule

| ID | WBS | Task | Type | Duration | Start | Finish | Predecessors | Complete | Remaining | Actual start | Total slack | Free slack | Constraint | Resources | Work | Actual work |
| --- | --- | --- | --- | --- | --- | --- | --- | --- | --- | --- | --- | --- | --- | --- | --- | --- |
| 1 | 1 | **项目名称-营销一体化（一期）** |  | 57.69d | 2019-05-05 09:00 | 2019-07-08 18:00 |  | 25% | 43.07d | 2019-05-07 09:00 |  |  |  |  | 627h | 84.9h |
| 2 | 1.1 | **项目启动** |  | 1d | 2019-05-07 09:00 A | 2019-05-07 18:00 A |  | 100% |  |  |  |  |  |  |  |  |
| 3 | 1.1.1 | 启动会 | manual | 1d | 2019-05-07 09:00 A | 2019-05-07 18:00 A |  | 100% |  |  |  |  |  |  |  |  |
| 4 | 1.2 | **需求分析** |  | 11.38d | 2019-05-08 09:00 A | 2019-05-20 18:00 |  | 97% | 0.33d |  |  |  |  |  |  |  |
| 5 | 1.2.1 | 全员营销需求分析 | manual | 3d | 2019-05-08 09:00 A | 2019-05-10 18:00 A |  | 100% |  |  |  |  |  |  |  |  |
| 6 | 1.2.2 | 除全员外的其它需求分析 | manual | 4d | 2019-05-09 09:00 A | 2019-05-14 18:00 |  | 90% | 0.4d |  |  |  |  |  |  |  |
| 7 | 1.2.3 | 规格需求说明书 | manual | 7d | 2019-05-10 09:00 A | 2019-05-20 18:00 A |  | 100% |  |  |  |  |  |  |  |  |
| 8 | 1.3 | **概要设计** |  | 7d | 2019-05-21 09:00 A | 2019-05-28 16:30 |  | 64% | 2.53d |  | 0d |  |  |  | 131.5h | 84.9h |
| 9 | 1.3.1 | 数据库设计 | manual | 7d | 2019-05-21 09:00 A | 2019-05-28 16:30 |  | 50% | 3.5d |  |  |  |  | 费腾飞; 杨晓亮 | 93h | 56h |
| 10 | 1.3.2 | UI原型设计 | manual | 6d | 2019-05-22 09:00 A | 2019-05-28 16:30 |  | 80% | 1.2d |  |  |  |  | 刘稳 | 38.5h | 28.9h |
| 11 | 1.4 | **移动端H5** |  | 24.69d | 2019-05-29 09:00 | 2019-06-26 08:30 |  |  |  |  | 0d |  |  | 翟羽楠 | 159.5h |  |
| 12 | 1.4.1 | 登录 | manual | 1d | 2019-05-29 09:00 | 2019-05-29 18:00 |  |  |  |  |  |  |  |  |  |  |
| 13 | 1.4.2 | **全员营销** |  | 17.5d | 2019-05-30 09:00 | 2019-06-19 08:30 |  |  |  |  | 0d |  |  |  |  |  |
| 14 | 1.4.2.1 | 业务预约 | manual | 1d | 2019-05-30 09:00 | 2019-05-30 18:00 |  |  |  |  |  |  |  |  |  |  |
| 15 | 1.4.2.2 | **营销统计** |  | 13.38d | 2019-05-31 08:30 | 2019-06-15 09:00 |  |  |  |  | 3.19d |  |  |  |  |  |
| 16 | 1.4.2.2.1 | 我的营销奖励 |  | 0.5d | 2019-05-31 13:00 | 2019-05-31 18:00 |  |  |  |  | 32.62d | 0d | finish no earlier than 2019-05-31 18:00 |  |  |  |
| 17 | 1.4.2.2.2 | 个人营销值分析 |  | 0.5d | 2019-05-31 08:30 | 2019-05-31 13:30 |  |  |  |  | 51.69d |  | start no earlier than 2019-05-31 08:30 |  |  |  |
| 18 | 1.4.2.2.3 | 本行员工营销奖励 |  | 0.5d | 2019-06-01 08:30 | 2019-06-01 12:30 | 16 |  |  |  | 50.75d |  |  |  |  |  |
| 19 | 1.4.2.2.4 | 机构营销值分析 |  | 0.5d | 2019-06-01 08:30 | 2019-06-01 12:30 |  |  |  |  | 50.75d |  | start no earlier than 2019-06-01 08:30 |  |  |  |
| 20 | 1.4.2.2.5 | 全行员工营销TOP20 |  | 0.5d | 2019-06-03 08:30 | 2019-06-03 13:30 |  |  |  |  | 49.5d |  | start no earlier than 2019-06-03 08:30 |  |  |  |
| 21 | 1.4.2.2.6 | 全行员工营销奖励 |  | 0.5d | 2019-06-03 08:30 | 2019-06-03 13:30 |  |  |  |  | 49.5d |  | start no earlier than 2019-06-03 08:30 |  |  |  |
| 22 | 1.4.2.2.7 | 全员营销汇总报表 | manual | 6d | 2019-06-04 08:30 | 2019-06-10 16:00 |  |  |  |  |  |  | start no earlier than 2019-06-04 08:30 |  |  |  |
| 23 | 1.4.2.2.8 | 全员营销汇总报表-片区 |  | 2d | 2019-06-10 08:30 | 2019-06-12 08:30 |  |  |  |  | 41.81d |  | start no earlier than 2019-06-10 08:30 |  |  |  |
| 24 | 1.4.2.2.9 | 业务营销每日信息 |  | 1d | 2019-06-13 08:30 | 2019-06-14 08:30 |  |  |  |  | 39.81d |  | start no earlier than 2019-06-13 08:30 |  |  |  |
| 25 | 1.4.2.2.10 | 支行营销每日信息 |  | 1d | 2019-06-14 08:30 | 2019-06-15 09:00 |  |  |  |  | 20.69d |  | start no earlier than 2019-06-14 08:30 |  |  |  |
| 26 | 1.4.2.3 | 补认领/申诉 | manual | 1d | 2019-06-15 08:30 | 2019-06-15 16:30 |  |  |  |  |  |  |  |  |  |  |
| 27 | 1.4.2.4 | 业务审核/控制 | manual | 1.5d | 2019-06-17 08:30 | 2019-06-18 13:30 |  |  |  |  |  |  |  |  |  |  |
| 28 | 1.4.2.5 | 小微企业贷款两增两控指标 | manual | 1d | 2019-06-18 08:30 | 2019-06-19 08:30 |  |  |  |  |  |  |  |  |  |  |
| 29 | 1.4.3 | 客户列表展示 | manual | 2d | 2019-06-20 08:30 | 2019-06-22 09:00 |  |  |  |  |  |  |  |  |  |  |
| 30 | 1.4.4 | 产品分类展示 | manual | 2d | 2019-06-22 08:30 | 2019-06-24 15:30 |  |  |  |  |  |  |  |  |  |  |
| 31 | 1.4.5 | 发布任务 | manual | 2d | 2019-06-24 08:30 | 2019-06-26 08:30 |  |  |  |  |  |  |  |  |  |  |

| ID | WBS | Task | Type | Duration | Start | Finish | Predecessors | Total slack | Free slack | Constraint | Resources | Work |
| --- | --- | --- | --- | --- | --- | --- | --- | --- | --- | --- | --- | --- |
| 32 | 1.5 | **PC端H5框架** |  | 4d | 2019-06-27 08:30 | 2019-07-01 16:00 |  |  |  |  | 翟羽楠 | 22.5h |
| 33 | 1.5.1 | PC端框架 |  | 2d | 2019-06-27 08:30 | 2019-06-29 09:00 |  | 2d |  |  |  |  |
| 34 | 1.5.2 | 权限管理 |  | 1d | 2019-06-29 08:30 | 2019-06-29 16:30 |  | 7.38d |  | start no earlier than 2019-06-29 08:30 |  |  |
| 35 | 1.5.3 | 产品管理 |  | 0.5d | 2019-07-01 08:30 | 2019-07-01 13:30 |  | 6.62d |  | start no earlier than 2019-07-01 08:30 |  |  |
| 36 | 1.5.4 | 业务类型管理 |  | 0.5d | 2019-07-01 08:30 | 2019-07-01 13:30 |  | 6.62d |  | start no earlier than 2019-07-01 08:30 |  |  |
| 37 | 1.6 | **app（Android和IOS）** |  | 3.94d | 2019-06-25 08:30 | 2019-06-28 18:00 |  | 0d |  |  |  |  |
| 38 | 1.6.1 | UEM | manual | 2d | 2019-06-25 08:30 | 2019-06-26 17:30 |  |  |  |  |  |  |
| 39 | 1.6.2 | H5 | manual | 2d | 2019-06-27 09:00 | 2019-06-28 18:00 |  |  |  |  |  |  |
| 40 | 1.7 | **接口组** |  | 16.5d | 2019-05-29 08:30 | 2019-06-15 18:00 |  |  |  |  | 费腾飞; 杨晓亮 | 225h |
| 41 | 1.7.1 | 用户登录登出 |  | 0.5d | 2019-05-29 08:30 | 2019-05-29 13:30 |  | 53.69d |  | start no earlier than 2019-05-29 08:30 |  |  |
| 42 | 1.7.2 | 权限管理 |  | 0.5d | 2019-05-29 08:30 | 2019-05-29 13:30 |  | 16d |  |  |  |  |
| 43 | 1.7.3 | 获取业务类型 |  | 0.25d | 2019-05-30 08:30 | 2019-05-30 10:30 |  | 52.94d |  | start no earlier than 2019-05-30 08:30 |  |  |
| 44 | 1.7.4 | 业务预约申请 |  | 0.5d | 2019-05-30 08:30 | 2019-05-30 13:30 |  | 52.69d |  | start no earlier than 2019-05-30 08:30 |  |  |
| 45 | 1.7.5 | 预约进度查询 |  | 0.25d | 2019-05-30 08:30 | 2019-05-30 10:30 |  | 52.94d |  | start no earlier than 2019-05-30 08:30 |  |  |
| 46 | 1.7.6 | 营销统计 |  | 10d | 2019-05-31 08:30 | 2019-06-11 14:30 |  | 42.19d |  | start no earlier than 2019-05-31 08:30 |  |  |
| 47 | 1.7.7 | 补认领申请 |  | 0.5d | 2019-06-10 08:30 | 2019-06-10 13:30 |  | 43.31d |  | start no earlier than 2019-06-10 08:30 |  |  |
| 48 | 1.7.8 | 补认领进度查询 |  | 0.25d | 2019-06-10 08:30 | 2019-06-10 10:30 |  | 43.56d |  | start no earlier than 2019-06-10 08:30 |  |  |
| 49 | 1.7.9 | 申诉进度查询 |  | 0.25d | 2019-06-10 08:30 | 2019-06-10 10:30 |  | 43.56d |  | start no earlier than 2019-06-10 08:30 |  |  |
| 50 | 1.7.10 | 补认领审核 |  | 0.3d | 2019-06-11 08:30 | 2019-06-11 10:54 |  | 42.51d |  | start no earlier than 2019-06-11 08:30 |  |  |
| 51 | 1.7.11 | 申诉审核 |  | 0.3d | 2019-06-11 08:30 | 2019-06-11 10:54 |  | 42.51d |  | start no earlier than 2019-06-11 08:30 |  |  |
| 52 | 1.7.12 | 补认领审核控制 |  | 0.3d | 2019-06-11 08:30 | 2019-06-11 10:54 |  | 42.51d |  | start no earlier than 2019-06-11 08:30 |  |  |
| 53 | 1.7.13 | 小微企业贷款两增两控指标 |  | 1d | 2019-06-12 08:30 | 2019-06-13 08:30 |  | 0.12d | 0d | start no earlier than 2019-06-12 08:30 |  |  |
| 54 | 1.7.14 | 客户关系 |  | 1d | 2019-06-13 08:30 | 2019-06-14 08:30 | 53 | 0.12d | 0d |  |  |  |
| 55 | 1.7.15 | 产品种类及类表 |  | 1d | 2019-06-14 08:30 | 2019-06-15 09:00 | 54 | 0.12d | 0d |  |  |  |
| 56 | 1.7.16 | 任务发布 |  | 1d | 2019-06-15 09:00 | 2019-06-15 17:00 | 55 | 0.12d |  |  |  |  |

| ID | WBS | Task | Type | Duration | Start | Finish | Predecessors | Total slack | Free slack | Constraint | Resources | Work |
| --- | --- | --- | --- | --- | --- | --- | --- | --- | --- | --- | --- | --- |
| 57 | 1.8 | **测试** |  | 12.31d | 2019-06-24 08:30 | 2019-07-06 18:00 |  |  |  |  | 戴亚楠 | 88.5h |
| 58 | 1.8.1 | **移动端** |  | 8.25d | 2019-06-24 08:30 | 2019-07-02 18:00 |  |  |  |  |  |  |
| 59 | 1.8.1.1 | 用户登录登出 | manual | 1d | 2019-06-24 08:30 | 2019-06-25 08:30 |  |  |  |  |  |  |
| 60 | 1.8.1.2 | **全员营销** |  | 4d | 2019-06-25 08:30 | 2019-06-29 09:00 |  |  |  |  |  |  |
| 61 | 1.8.1.2.1 | 业务预约 | manual | 1d | 2019-06-25 08:30 | 2019-06-26 08:30 |  |  |  |  |  |  |
| 62 | 1.8.1.2.2 | 营销统计 | manual | 3d | 2019-06-26 08:30 | 2019-06-29 09:00 |  |  |  |  |  |  |
| 63 | 1.8.1.3 | 客户 | manual | 1d | 2019-06-29 08:30 | 2019-06-29 16:30 |  |  |  |  |  |  |
| 64 | 1.8.1.4 | 产品 | manual | 1d | 2019-06-30 08:30 | 2019-07-01 08:30 |  |  |  |  |  |  |
| 65 | 1.8.1.5 | 任务 | manual | 1d | 2019-07-01 08:30 | 2019-07-02 08:30 |  |  |  |  |  |  |
| 66 | 1.8.2 | **PC端** |  | 4d | 2019-07-01 08:30 | 2019-07-05 08:30 |  | 2.12d |  |  |  |  |
| 67 | 1.8.2.1 | 用户登录登出 |  | 1d | 2019-07-01 08:30 | 2019-07-02 08:30 |  | 5.12d |  | start no earlier than 2019-07-01 08:30 |  |  |
| 68 | 1.8.2.2 | 产品管理 |  | 2d | 2019-07-02 08:30 | 2019-07-04 08:30 |  | 2.12d | 0d | start no earlier than 2019-07-02 08:30 |  |  |
| 69 | 1.8.2.3 | 业务类型管理 |  | 1d | 2019-07-04 08:30 | 2019-07-05 08:30 | 68 | 2.12d |  |  |  |  |
